# MDSS

Schedule from MS Project, 2009-02-02 to 2009-06-30, costs in USD, A marks actual dates.
Misty Heights
Test site is available

## Calendars

- Standard: Mon-Fri 08:00-12:00, 13:00-17:00; Sat-Sun off.

## Resources

| Resource | Group | Rate |
| --- | --- | --- |
| Nathan | Terra Frame | 115 |
| Thomas (Oz) | Terra Frame | 115 |
| Justin | Terra Frame | 115 |
| Darrell | Terra Frame | 115 |
| MRC | Supplier |  |
| Naifeh | Terra Frame |  |
| Marlize | Project |  |
| Mike | Project |  |
| Eric | Terra Frame |  |
| TBD | Terra Frame | 115 |
| Saul | Project |  |
| Sanika | Project |  |
| Lars | Project |  |
| Miguel | Project |  |
| Dave | Project |  |

## Schedule

| ID | WBS | Task | Type | Duration | Start | Finish | Predecessors | Complete | Remaining | Baseline start | Baseline finish | Baseline duration | Total slack | Free slack | Constraint | Resources | Work | Actual work | Cost | Baseline cost | Actual cost | Text1 | Text2 | Text4 | Text3 |
| --- | --- | --- | --- | --- | --- | --- | --- | --- | --- | --- | --- | --- | --- | --- | --- | --- | --- | --- | --- | --- | --- | --- | --- | --- | --- |
| 1 | 1 | **MDSS Implementation** |  | 90.06d? | 2009-02-02 A | 2009-06-08 |  | 37% | 56.34d? | 2009-02-02 | 2009-05-28 | 83.25d? | 16.94d |  |  |  | 2892.26h | 1224.34h | 159,459.25 | 257,416.04 | 66,539.25 |  |  |  |  |
| 2 | 1.1 | **Create Prototype (Entomology)** |  | 68d? | 2009-02-02 A | 2009-05-06 |  | 85% | 10.12d? | 2009-02-02 | 2009-03-12 | 28.23d? | 38d | 0d |  |  | 1138.6h | 970.6h | 66,999.25 | 74,152.04 | 64,239.25 |  |  |  |  |
| 3 | 1.1.1 | **System requirements** |  | 68d? | 2009-02-02 A | 2009-05-06 |  | 89% | 7.56d? | 2009-02-02 | 2009-03-09 | 26d? | 38d |  |  |  | 655.4h | 591.4h | 37,191.25 | 31,372.04 | 37,191.25 |  |  |  |  |
| 4 | 1.1.1.1 | Dev: Ontology Schema MIRO |  | 15.5d | 2009-02-02 A | 2009-02-23 A |  | 100% |  | 2009-02-02 | 2009-02-09 | 6d |  |  |  | Thomas (Oz) [85%] | 105.4h | 105.4h | 12,121 | 4,692 | 12,121 | SYS08 | 5 days |  |  |
| 5 | 1.1.1.2 | Dev: Geography MOJO attributes (PostGIS phase 1) |  | 20d | 2009-02-02 A | 2009-02-27 A |  | 100% |  | 2009-02-02 | 2009-02-09 | 5.88d? |  |  | finish no earlier than 2009-02-24 | Nathan [85%] | 136h | 136h | 15,640.25 | 4,600.04 | 15,640.25 | SYS03-01 | 7 days |  |  |
| 6 | 1.1.1.3 | Dev: Geography functions integrated into the query API |  | 5d | 2009-03-02 A | 2009-03-06 A | 5 | 100% |  | 2009-02-09 | 2009-02-17 | 5.88d? |  |  | finish no earlier than 2009-03-06 | Nathan [85%] | 34h | 34h | 3,910 | 4,600 | 3,910 | SYS03-02 | 7 days |  |  |
| 7 | 1.1.1.4 | Dev: GIS visual tool integration |  | 8d | 2009-02-02 A | 2009-03-04 A |  | 100% |  | 2009-02-10 | 2009-02-19 | 7.06d? |  |  |  | Naifeh | 64h | 64h |  | 5,520 |  | SYS10 | 6 days |  |  |
| 8 | 1.1.1.5 | Dev: Geoserver integration |  | 8d | 2009-02-12 A | 2009-03-03 A |  | 100% |  | 2009-02-19 | 2009-03-02 | 7.06d? |  |  | finish no earlier than 2009-03-03 | Naifeh | 64h | 64h |  | 5,520 |  | SYS11 | 6 days |  |  |
| 9 | 1.1.1.6 | Dev: DHTML tree widget selection and integration |  | 8.5d | 2009-02-11 A | 2009-02-23 A |  | 100% |  | 2009-02-11 | 2009-02-17 | 5d? |  |  | start no earlier than 2009-02-11 | Naifeh | 68h | 68h |  |  |  | SYS02 | 5 days | 10 |  |
| 10 | 1.1.1.7 | Dev: import/export an XLS file with a pre-populated headers |  | 11d | 2009-02-11 A | 2009-05-06 |  | 64% | 4d | 2009-02-11 | 2009-02-18 | 6d? | 38d |  | start no earlier than 2009-02-11 | Eric | 88h | 56h |  |  |  | SYS04-01 | 2 days | 11 |  |
| 11 | 1.1.1.8 | Dev: Import XLS file. Map column headers to fields of a class |  | 2d? | 2009-02-20 A | 2009-02-23 A | 10 | 100% |  | 2009-02-19 | 2009-02-20 | 2d? |  |  |  | Eric | 16h | 16h |  |  |  | SYS04-02 | 2 days | 12 |  |
| 12 | 1.1.1.9 | Dev: Represent query criteria in back-end |  | 6d? | 2009-03-09 A | 2009-03-16 A | 6 | 100% |  | 2009-02-25 | 2009-03-03 | 5d? |  |  | finish no earlier than 2009-03-16 | Nathan | 48h | 48h | 5,520 |  | 5,520 | SYS06 | 5 days | 14 |  |
| 13 | 1.1.1.10 | Dev: Save query criteria to the database |  | 1d? | 2009-04-07 | 2009-04-07 | 45 |  |  | 2009-03-04 | 2009-03-04 | 1d? | 17d | 0d |  | Naifeh | 8h |  |  |  |  | SYS06-03 | 1 day | 15 |  |
| 14 | 1.1.1.11 | Dev: Generic GIS visualisation and output requirements |  | 40h | 2009-03-23 | 2009-03-27 | 18 |  |  | 2009-03-02 | 2009-03-09 | 47.06h | 16.94d | 0d | finish no earlier than 2009-03-27 | Naifeh [60%] | 24h |  |  | 4,600 |  | MDSS143 |  | 16 |  |
| 15 | 1.1.2 | **Prototype Use cases** |  | 59d? | 2009-02-09 A | 2009-04-30 |  | 80% | 11.65d? | 2009-02-09 | 2009-03-12 | 23.23d? | 42d |  |  |  | 483.2h | 379.2h | 29,808 | 42,780 | 27,048 |  |  | 17 |  |
| 16 | 1.1.2.1 | **Search for a geo entity** |  | 18.35d? | 2009-02-20 A | 2009-03-18 A |  | 100% |  | 2009-02-20 | 2009-03-12 | 14.12d? |  |  |  |  | 88h | 88h |  | 11,040 |  | MDSS101 |  | 18 |  |
| 17 | 1.1.2.1.1 | Dev: Search for a geo entity - ontology tree |  | 9d | 2009-02-20 A | 2009-03-09 A |  | 100% |  | 2009-02-20 | 2009-02-26 | 4.71d? |  |  | finish no earlier than 2009-03-09 | Naifeh | 72h | 72h |  | 3,680 |  | MDSS111 | 4 days | 19 |  |
| 18 | 1.1.2.1.2 | Dev: Search for a geo entity |  | 2d? | 2009-03-17 A | 2009-03-18 A | 6, 17 | 100% |  | 2009-02-26 | 2009-03-03 | 2.35d? |  |  | finish no earlier than 2009-03-18 | Naifeh | 16h | 16h |  | 1,840 |  | MDSS101 |  | 20 |  |
| 19 | 1.1.2.2 | Investigate widget libraries |  | 16h | 2009-02-09 A | 2009-02-10 A |  | 100% |  | 2009-02-09 | 2009-02-10 | 16h |  |  | start no earlier than 2009-02-07 | Darrell | 16h | 16h | 1,840 | 1,840 | 1,840 |  |  | 24 |  |
| 20 | 1.1.2.3 | Dev: login to MDSS |  | 4h | 2009-02-11 A | 2009-02-11 A | 19 | 100% |  | 2009-02-11 | 2009-02-11 | 4h |  |  |  | Darrell | 4h | 4h | 460 | 460 | 460 | MDSS107 |  | 25 |  |
| 21 | 1.1.2.4 | Dev: BE - Submit a mosquito collection |  | 20h | 2009-02-09 A | 2009-04-30 A |  | 100% |  | 2009-02-09 | 2009-02-11 | 20h |  |  | start no earlier than 2009-02-07 | Justin [80%] | 16h | 16h | 1,840 | 1,840 | 1,840 | MDSS024 |  | 26 |  |
| 22 | 1.1.2.5 | Dev: GUI - Submit a mosquito collection |  | 20h | 2009-02-18 A | 2009-02-20 A | 20, 21 | 100% |  | 2009-02-11 | 2009-02-13 | 20h |  |  | start no earlier than 2009-02-18 | Darrell [80%] | 16h | 16h | 1,840 | 1,840 | 1,840 | MDSS024 |  | 27 |  |
| 23 | 1.1.2.6 | Dev: GUI - Adult discriminating dose assay |  | 20h | 2009-02-24 A | 2009-02-26 A | 34, 22 | 100% |  | 2009-02-25 | 2009-02-27 | 20h |  |  |  | Darrell [80%] | 16h | 16h | 1,840 | 1,840 | 1,840 | MDSS004 |  | 35 |  |
| 24 | 1.1.2.7 | Dev: BE - Submit collection points |  | 1.25d? | 2009-02-11 A | 2009-02-12 A | 21 | 100% |  | 2009-02-11 | 2009-02-12 | 1.25d? |  |  |  | Justin [80%] | 8h | 8h | 920 | 920 | 920 | MDSS016 |  | 28 |  |
| 25 | 1.1.2.8 | Dev: BE - Resistance Mechanisms |  | 5.75d | 2009-02-23 A | 2009-03-02 A | 24 | 100% |  | 2009-02-12 | 2009-02-17 | 2.5d? |  |  | finish no earlier than 2009-03-02 | Justin [80%] | 36.8h | 36.8h | 4,232 | 1,840 | 4,232 | MDSS012 |  | 30 |  |
| 26 | 1.1.2.9 | Dev: GUI - Resistance Mechanisms |  | 48h | 2009-03-03 A | 2009-03-10 A | 25, 23 | 100% |  | 2009-02-17 | 2009-02-24 | 40h |  |  | finish no earlier than 2009-03-06 | Darrell [200%] | 32h | 32h | 3,680 | 3,680 | 3,680 | MDSS012 |  | 31 |  |
| 27 | 1.1.2.10 | Dev: GUI - Submit collection points |  | 10h | 2009-03-23 | 2009-03-24 | 32 |  |  | 2009-02-16 | 2009-02-17 | 10h | 25.07d | 0d | start no earlier than 2009-02-24 | Darrell [80%] | 8h |  | 920 | 920 |  | MDSS016 |  | 29 |  |
| 28 | 1.1.2.11 | Dev: GUI - Efficacy assay |  | 5h | 2009-03-13 A | 2009-03-16 A | 35 | 100% |  | 2009-03-18 | 2009-03-23 | 20h |  |  | finish no earlier than 2009-03-13 | Darrell [80%] | 4h | 4h | 460 | 1,840 | 460 | MDSS025 |  | 51 |  |
| 29 | 1.1.2.12 | Dev: BE - Resistance cut-off values |  | 1.25d? | 2009-02-20 A | 2009-02-23 A |  | 100% |  | 2009-02-17 | 2009-02-18 | 1.25d? |  |  |  | Justin [80%] | 8h | 8h | 920 | 920 | 920 | MDSS009 |  | 32 |  |
| 30 | 1.1.2.13 | Dev: GUI - Resistance cut-off values |  | 8h | 2009-02-27 A | 2009-02-27 A | 29 | 100% |  | 2009-02-24 | 2009-02-25 | 10h |  |  | start no earlier than 2009-02-27 | Darrell | 8h | 8h | 920 | 920 | 920 | MDSS009 |  | 33 |  |
| 31 | 1.1.2.14 | Dev: BE - Adult knock down assay |  | 1.25d? | 2009-03-16 A | 2009-03-17 A | 28, 44 | 100% |  | 2009-03-05 | 2009-03-09 | 1.5d? |  |  |  | Justin [80%] | 8h | 8h | 920 | 1,104 | 920 | MDSS006 |  | 46 |  |
| 32 | 1.1.2.15 | Dev: GUI - Adult knock down assay |  | 10h | 2009-03-20 | 2009-03-23 | 31, 33 |  |  | 2009-03-13 | 2009-03-16 | 15h | 25.07d | 0d |  | Darrell [80%] | 8h |  | 920 | 1,380 |  | MDSS006 |  | 47 |  |
| 33 | 1.1.2.16 | Dev: GUI - Larvae discriminating dose assay |  | 10h | 2009-03-19 | 2009-03-20 |  |  |  | 2009-03-16 | 2009-03-18 | 15h | 25.07d | 0d | start no earlier than 2009-03-19 | Darrell [80%] | 8h |  | 920 | 1,380 |  | MDSS008 |  | 49 | 10 |
| 34 | 1.1.2.17 | Dev: BE - Adult discriminating dose assay |  | 1.25d? | 2009-02-23 A | 2009-02-24 A | 29 | 100% |  | 2009-02-18 | 2009-02-20 | 2.5d? |  |  |  | Justin [80%] | 8h | 8h | 920 | 1,840 | 920 | MDSS004 |  | 34 |  |
| 35 | 1.1.2.18 | Dev: BE - Efficacy assay |  | 2.5d? | 2009-03-11 A | 2009-03-13 A |  | 100% |  | 2009-03-10 | 2009-03-13 | 2.5d? |  |  | start no earlier than 2009-03-11 | Justin [80%] | 16h | 16h | 1,840 | 1,840 | 1,840 | MDSS025 |  | 50 |  |
| 36 | 1.1.2.19 | Dev: Configure import interfaces |  | 32h | 2009-02-24 A | 2009-02-27 A |  | 100% |  | 2009-02-23 | 2009-02-24 | 10h |  |  | start no earlier than 2009-02-24 | Eric [50%] | 16h | 16h |  | 920 |  | MDSS100 |  | 36 |  |
| 37 | 1.1.2.20 | Dev: BE - Entomology dynamic query |  | 5d | 2009-03-23 | 2009-03-27 | 34 |  |  | 2009-02-24 | 2009-02-26 | 2.5d? | 22d | 5d | finish no earlier than 2009-03-27 | Naifeh | 40h |  |  | 1,840 |  | MDSS145 |  | 38 |  |
| 38 | 1.1.2.21 | Dev: Enquiry integration with selected reporting tool |  | 4d? | 2009-03-06 A | 2009-03-11 A | 25 | 100% |  | 2009-02-26 | 2009-03-04 | 4d? |  |  | finish no earlier than 2009-03-11 | Justin | 32h | 32h | 3,680 | 3,680 | 3,680 | SYS09 |  | 40 |  |
| 39 | 1.1.2.22 | Dev: Create formatted dynamic reports |  | 8h | 2009-03-12 A | 2009-03-12 A | 38 | 100% |  |  |  |  |  |  | start no earlier than 2009-03-12 | Justin [80%] | 6.4h | 6.4h | 736 |  | 736 | MDSS062 |  | 360 |  |
| 40 | 1.1.2.23 | Dev: MO Importer |  | 40h | 2009-03-02 A | 2009-03-06 A |  | 100% |  |  |  |  |  |  | start no earlier than 2009-03-02 | Eric | 40h | 40h |  |  |  |  |  | 359 |  |
| 41 | 1.1.2.24 | Dev: change visibility of fields on GUI |  | 40h | 2009-03-31 | 2009-04-06 | 173 |  |  | 2009-03-05 | 2009-03-11 | 32h | 29.24d | 0d |  | Eric | 40h |  |  | 3,680 |  | MDSS117 |  | 41 |  |
| 42 | 1.2 | Delivery of prototype | milestone | 1d? | 2009-05-07 | 2009-05-07 | 2 |  |  | 2009-03-12 | 2009-03-13 | 1d? | 38d |  |  |  |  |  |  |  |  |  |  | 42 |  |
| 43 | 1.3 | Required delivery of prototype | milestone | 8h | 2009-03-09 A | 2009-03-09 A |  | 100% |  | 2009-03-02 | 2009-03-02 | 8h |  |  | start no earlier than 2009-03-09 |  |  |  |  |  |  |  |  | 43 |  |
| 44 | 1.4 | Dev: BE - Larvae discriminating dose assay |  | 1.25d? | 2009-03-13 A | 2009-03-16 A | 35 | 100% |  | 2009-03-09 | 2009-03-10 | 1.5d? |  |  | finish no earlier than 2009-03-13 | Justin [80%] | 8h | 8h | 920 | 1,104 | 920 | MDSS008 |  | 48 | 10 |
| 45 | 1.5 | Dev: GUI - Entomology dynamic query |  | 8h | 2009-04-06 | 2009-04-06 | 37 |  |  | 2009-03-03 | 2009-03-05 | 20h | 17d | 0d |  | Naifeh | 8h |  |  | 1,840 |  | MDSS145 |  | 39 |  |
| 46 | 1.6 | CR: BE - Submit Collection Points |  | 4h | 2009-03-18 A | 2009-03-18 A | 31 | 100% |  |  |  |  |  |  |  | Justin | 4h | 4h | 460 |  | 460 | MDSS016 |  | 361 |  |
| 47 | 1.7 | CR: BE - Mechanisms |  | 4h | 2009-03-18 A | 2009-03-18 A | 46 | 100% |  |  |  |  |  |  |  | Justin | 4h | 4h | 460 |  | 460 | MDSS012 |  | 362 |  |
| 48 | 1.8 | CR: GUI - Mechanisms |  | 4h | 2009-03-24 | 2009-03-25 | 47, 27 |  |  |  |  |  | 25.07d | 0d |  | Darrell | 4h |  | 460 |  |  | MDSS012 |  | 363 |  |
| 49 | 1.9 | CR: BE - Resistance cut-off values |  | 4h | 2009-03-19 A | 2009-03-19 A | 47 | 100% |  |  |  |  |  |  |  | Justin | 4h | 4h | 460 |  | 460 | MDSS009 |  | 364 |  |
| 50 | 1.10 | CR: GUI - Resistance cut-off values |  | 4h | 2009-03-25 | 2009-03-25 | 49, 48 |  |  |  |  |  | 25.07d | 0.25d |  | Darrell | 4h |  | 460 |  |  | MDSS009 |  | 365 |  |

| ID | WBS | Task | Type | Duration | Start | Finish | Predecessors | Complete | Baseline start | Baseline finish | Baseline duration | Total slack | Free slack | Constraint | Resources | Work | Actual work | Text4 |
| --- | --- | --- | --- | --- | --- | --- | --- | --- | --- | --- | --- | --- | --- | --- | --- | --- | --- | --- |
| 51 | 1.11 | **Aquire Geo Data** |  | 22d? | 2009-03-24 | 2009-04-22 |  |  | 2009-02-10 | 2009-02-24 | 11d? | 49d |  |  |  |  |  | 52 |
| 52 | 1 | **Mozambique** |  | 0d | 2009-03-24 | 2009-03-24 |  |  | 2009-02-10 | 2009-02-24 | 11d? | 71d |  |  |  |  |  | 53 |
| 53 | 1.1 | Priority 1: Province Boundaries | milestone | 0h | 2009-03-24 | 2009-03-24 |  |  | 2009-02-10 | 2009-02-23 | 10d | 71d |  | start no earlier than 2009-03-24 |  |  |  | 54 |
| 54 | 1.2 | Priority 1: District Boundaries | milestone | 0h | 2009-03-24 | 2009-03-24 |  |  | 2009-02-10 | 2009-02-13 | 4d? | 71d |  | start no earlier than 2009-03-24 |  |  |  | 57 |
| 55 | 1.3 | Priority 1: Administrative Post Boundaries | milestone | 0h | 2009-03-24 | 2009-03-24 |  |  | 2009-02-10 | 2009-02-13 | 4d? | 71d |  | start no earlier than 2009-03-24 |  |  |  | 60 |
| 56 | 1.4 | Priority 1: Locality Boundaries | milestone | 0h | 2009-03-24 | 2009-03-24 |  |  | 2009-02-10 | 2009-02-13 | 4d? | 71d |  | start no earlier than 2009-03-24 |  |  |  | 63 |
| 57 | 1.5 | Priority 1: Village Points | milestone | 0h | 2009-03-24 | 2009-03-24 |  |  | 2009-02-10 | 2009-02-23 | 10d? | 71d |  | start no earlier than 2009-03-24 |  |  |  | 66 |
| 58 | 1.6 | Priority 1: Health Facility Points | milestone | 0h | 2009-03-24 | 2009-03-24 |  |  | 2009-02-10 | 2009-02-24 | 11d? | 71d |  | start no earlier than 2009-03-24 |  |  |  | 69 |
| 59 | 1.7 | Priority 1: Sentinel Site Points | milestone | 0h | 2009-03-24 | 2009-03-24 |  |  | 2009-02-10 | 2009-02-16 | 5d? | 71d |  | start no earlier than 2009-03-24 |  |  |  | 72 |
| 60 | 1.8 | Priority 1: Window Trap Points | milestone | 0h | 2009-03-24 | 2009-03-24 |  |  | 2009-02-10 | 2009-02-16 | 5d? | 71d |  | start no earlier than 2009-03-24 |  |  |  | 75 |
| 61 | 2 | **Malawi** |  | 1d | 2009-03-31 | 2009-03-31 |  |  | 2009-02-10 | 2009-02-23 | 10d? | 65d |  |  |  |  |  | 78 |
| 62 | 2.1 | Priority 1: Province / Region Boundaries |  | 1d | 2009-03-31 | 2009-03-31 |  |  | 2009-02-10 | 2009-02-23 | 10d? | 65d |  | start no earlier than 2009-03-31 |  |  |  | 79 |
| 63 | 2.2 | Priority 1: District Boundaries | milestone | 1d | 2009-03-31 | 2009-03-31 |  |  | 2009-02-10 | 2009-02-23 | 10d? | 65d |  | start no earlier than 2009-03-31 |  |  |  | 82 |
| 64 | 2.3 | Priority 1: Traditional Authority Boundaries | milestone | 1d | 2009-03-31 | 2009-03-31 |  |  | 2009-02-10 | 2009-02-23 | 10d? | 65d |  | start no earlier than 2009-03-31 |  |  |  | 85 |
| 65 | 2.4 | Priority 1: Village Points | milestone | 1d | 2009-03-31 | 2009-03-31 |  |  | 2009-02-10 | 2009-02-23 | 10d? | 65d |  | start no earlier than 2009-03-31 |  |  |  | 88 |
| 66 | 2.5 | Priority 1: Health Facility Points | milestone | 1d | 2009-03-31 | 2009-03-31 |  |  | 2009-02-10 | 2009-02-23 | 10d? | 65d |  | start no earlier than 2009-03-31 |  |  |  | 91 |
| 67 | 2.6 | Priority 1: Sentinel Site Points | milestone | 1d | 2009-03-31 | 2009-03-31 |  |  | 2009-02-10 | 2009-02-19 | 8d? | 65d |  | start no earlier than 2009-03-31 |  |  |  | 94 |
| 68 | 2.7 | Priority 1: Window Trap Points | milestone | 1d | 2009-03-31 | 2009-03-31 |  |  | 2009-02-10 | 2009-02-17 | 6d? | 65d |  | start no earlier than 2009-03-31 |  |  |  | 97 |
| 69 | 3 | **Zambia** |  | 10d? | 2009-04-09 | 2009-04-22 |  |  | 2009-02-10 | 2009-02-23 | 10d? | 49d |  |  |  |  |  | 100 |
| 70 | 3.1 | Priority 1: Province Boundaries | milestone | 10d? | 2009-04-09 | 2009-04-22 |  |  | 2009-02-10 | 2009-02-23 | 10d? | 49d |  | start no earlier than 2009-04-09 |  |  |  | 101 |
| 71 | 3.2 | Priority 1: District Boundaries | milestone | 10d? | 2009-04-09 | 2009-04-22 |  |  | 2009-02-10 | 2009-02-23 | 10d? | 49d |  | start no earlier than 2009-04-09 |  |  |  | 104 |
| 72 | 3.3 | Priority 1: Constituency Boundaries | milestone | 10d? | 2009-04-09 | 2009-04-22 |  |  | 2009-02-10 | 2009-02-23 | 10d? | 49d |  | start no earlier than 2009-04-09 |  |  |  | 107 |
| 73 | 3.4 | Priority 1: Ward Boundaries | milestone | 10d? | 2009-04-09 | 2009-04-22 |  |  | 2009-02-10 | 2009-02-23 | 10d? | 49d |  | start no earlier than 2009-04-09 |  |  |  | 110 |
| 74 | 3.5 | Priority 1: Village Points | milestone | 10d? | 2009-04-09 | 2009-04-22 |  |  | 2009-02-10 | 2009-02-23 | 10d? | 49d |  | start no earlier than 2009-04-09 |  |  |  | 113 |
| 75 | 3.6 | Priority 1: Health Facility Points | milestone | 10d? | 2009-04-09 | 2009-04-22 |  |  | 2009-02-10 | 2009-02-20 | 9d? | 49d |  | start no earlier than 2009-04-09 |  |  |  | 116 |
| 76 | 3.7 | Priority 1: Sentinel Site Points | milestone | 10d? | 2009-04-09 | 2009-04-22 |  |  | 2009-02-10 | 2009-02-20 | 9d? | 49d |  | start no earlier than 2009-04-09 |  |  |  | 119 |
| 77 | 3.8 | Priority 1: Window Trap Points | milestone | 10d? | 2009-04-09 | 2009-04-22 |  |  | 2009-02-10 | 2009-02-20 | 9d? | 49d |  | start no earlier than 2009-04-09 |  |  |  | 122 |
| 78 | 1.12 | Deliver Population data | milestone | 0h | 2009-04-09 | 2009-04-09 |  |  | 2009-02-24 | 2009-02-24 | 0h | 58d | 0d | start no earlier than 2009-04-09 | MRC |  |  | 125 |
| 79 | 1.13 | Import Geo data into MDSS schema |  | 8h | 2009-04-09 | 2009-04-09 | 78 |  | 2009-02-25 | 2009-02-25 | 8h | 58d |  |  |  | 24h |  | 126 |
| 80 | 1.14 | Deliver entomology data to be imported |  | 84h | 2009-02-18 A | 2009-03-04 A |  | 100% | 2009-02-20 | 2009-02-20 | 0h |  |  | start no earlier than 2009-02-18 | Mike | 64h | 64h | 127 |

| ID | WBS | Task | Type | Duration | Start | Finish | Predecessors | Complete | Remaining | Baseline start | Baseline finish | Baseline duration | Total slack | Free slack | Constraint | Deadline | Resources | Work | Actual work | Text4 | Text1 |
| --- | --- | --- | --- | --- | --- | --- | --- | --- | --- | --- | --- | --- | --- | --- | --- | --- | --- | --- | --- | --- | --- |
| 81 | 1.15 | **Prototype Test Cases** |  | 2.86d? | 2009-02-23 A | 2009-02-25 A |  | 100% |  | 2009-02-11 | 2009-02-13 | 2.86d? |  |  |  |  |  | 16h | 16h | 128 |  |
| 82 | 1.15.1 | TC: Geo Tree |  | 1.43d? | 2009-02-23 A | 2009-02-24 A |  | 100% |  | 2009-02-11 | 2009-02-12 | 1.43d? |  |  | start no earlier than 2009-02-21 |  | Marlize [70%] | 8h | 8h | 129 | MDSS111 |
| 83 | 1.15.2 | TC: Searching for a geo entity |  | 11.43h | 2009-02-24 A | 2009-02-25 A | 82 | 100% |  | 2009-02-12 | 2009-02-13 | 11.43h |  |  |  |  | Marlize [70%] | 8h | 8h | 130 | MDSS101 |
| 84 | 1.16 | Create test cases for entomology prototype |  | 88h | 2009-02-16 A | 2009-03-02 A |  | 100% |  | 2009-02-11 | 2009-02-20 | 64h |  |  | finish no earlier than 2009-03-02 |  | Mike [50%] | 32h | 32h | 131 |  |
| 85 | 1.17 | Test defect logging procedures |  | 0.71d? | 2009-03-04 A | 2009-03-04 A | 155 | 100% |  | 2009-02-24 | 2009-02-25 | 0.71d? |  |  | start no earlier than 2009-03-04 |  | Marlize [70%] | 4h | 4h | 132 |  |
| 86 | 1.18 | Prepare entomology test data |  | 5.72h | 2009-03-06 A | 2009-03-06 A | 80, 87 | 100% |  | 2009-02-27 | 2009-02-27 | 5.71h |  |  |  |  | Marlize [69.9%] | 4h | 4h | 133 |  |
| 87 | 1.19 | Learn BIRT report writer |  | 11.43h | 2009-03-19 A | 2009-03-20 A | 85 | 100% |  | 2009-02-25 | 2009-02-27 | 11.43h |  |  | start no earlier than 2009-03-19 |  | Marlize [70%] | 8h | 8h | 134 |  |
| 88 | 1.20 | **Test Prototype Submit Change Requests** |  | 24.57d? | 2009-03-16 A | 2009-04-17 |  | 11% | 21.96d? | 2009-03-02 | 2009-03-20 | 13.57d? | 52.43d |  |  |  |  | 104.06h | 14.74h | 135 |  |
| 89 | 1.20.1 | **Test: Geo entity search and maintanance** |  | 16.72d? | 2009-03-17 A | 2009-04-09 |  |  | 16.72d? | 2009-03-02 | 2009-03-12 | 7.15d? | 52.43d |  |  |  |  | 44.02h |  | 136 |  |
| 90 | 1.20.1.1 | Test: login to MDSS | milestone | 0h | 2009-03-17 A | 2009-03-17 A | 86 | 100% |  | 2009-03-02 | 2009-03-02 | 0h |  |  | start no earlier than 2009-03-09 | 2009-03-08 | Marlize [70%] |  |  | 137 | MDSS107 |
| 91 | 1.20.1.2 | Test: Search for a geo entity - tree |  | 0.36d? | 2009-03-30 | 2009-03-30 | 90, 159 |  |  | 2009-03-03 | 2009-03-03 | 0.36d? | 52.43d | 0d | start no earlier than 2009-03-03 |  | Marlize [70%] | 2h |  | 138 | MDSS111 |
| 92 | 1.20.1.3 | Submit defects: Search for a geo entity - tree |  | 0.71d? | 2009-03-30 | 2009-03-31 | 91 |  |  | 2009-03-03 | 2009-03-04 | 0.71d? | 52.43d | 0d |  |  | Marlize [70%] | 4h |  | 139 | MDSS111 |
| 93 | 1.20.1.4 | Test: create a geo entity |  | 2.86h | 2009-03-31 | 2009-03-31 | 92 |  |  | 2009-03-04 | 2009-03-04 | 2.86h | 52.43d | 0d |  |  | Marlize [70%] | 2h |  | 140 | MDSS101 |
| 94 | 1.20.1.5 | Submit defects: create a geo entity |  | 5.71h | 2009-03-31 | 2009-04-01 | 93 |  |  | 2009-03-04 | 2009-03-05 | 5.71h | 52.43d | 0d |  |  | Marlize [70%] | 4h |  | 141 | MDSS101 |
| 95 | 1.20.1.6 | Test: Search for a geo entity - filtered |  | 0.36d? | 2009-04-01 | 2009-04-01 | 94 |  |  | 2009-03-05 | 2009-03-05 | 0.36d? | 52.43d | 0d |  |  | Marlize [70%] | 2h |  | 142 | MDSS101 |
| 96 | 1.20.1.7 | Submit defects: Search for a geo entity - filtered |  | 0.36d | 2009-04-01 | 2009-04-02 | 95 |  |  | 2009-03-05 | 2009-03-05 | 0.36d | 52.43d | 0d |  |  | Marlize [70%] | 2.02h |  | 143 | MDSS101 |
| 97 | 1.20.1.8 | Test: Search for a geo entity - Hierarchy table |  | 1.43d? | 2009-04-02 | 2009-04-03 | 96 |  |  | 2009-03-05 | 2009-03-09 | 1.43d? | 52.43d | 0d |  |  | Marlize [70%] | 8h |  | 144 | MDSS101 |
| 98 | 1.20.1.9 | TC: IRS - dynamic query |  | 5.71h | 2009-04-03 | 2009-04-06 | 97 |  |  | 2009-03-30 | 2009-03-31 | 5.71h | 52.43d | 0d |  |  | Marlize [70%] | 4h |  | 328 | MDSS132 |
| 99 | 1.20.1.10 | Submit defects: Search for a geo entity - Hierarchy table |  | 0.71d? | 2009-04-06 | 2009-04-07 | 98 |  |  | 2009-03-09 | 2009-03-10 | 0.71d? | 52.43d | 0d |  |  | Marlize [70%] | 4h |  | 145 | MDSS101 |
| 100 | 1.20.1.11 | Test: Search for a geo entity - combo boxes |  | 0.36d? | 2009-04-07 | 2009-04-07 | 99 |  |  | 2009-03-10 | 2009-03-10 | 0.36d? | 52.43d | 0d |  |  | Marlize [70%] | 2h |  | 146 | MDSS101 |
| 101 | 1.20.1.12 | Submit defects: Search for a geo entity - combo boxes |  | 0.36d? | 2009-04-07 | 2009-04-07 | 100 |  |  | 2009-03-10 | 2009-03-10 | 0.36d? | 52.43d | 0d |  |  | Marlize [70%] | 2h |  | 147 | MDSS101 |
| 102 | 1.20.1.13 | Test: Call 101 from 024, 016, 025 |  | 0.36d? | 2009-04-07 | 2009-04-08 | 101 |  |  | 2009-03-10 | 2009-03-11 | 0.36d? | 52.43d | 0d |  |  | Marlize [70%] | 2h |  | 148 | MDSS101 |
| 103 | 1.20.1.14 | Submit defects: Call 101 from 024, 016, 025 |  | 0.36d? | 2009-04-08 | 2009-04-08 | 102 |  |  | 2009-03-11 | 2009-03-11 | 0.36d? | 52.43d | 0d |  |  | Marlize [70%] | 2h |  | 149 | MDSS101 |
| 104 | 1.20.1.15 | Write change request MDSS101, MDSS111 |  | 0.71d? | 2009-04-08 | 2009-04-09 | 103 |  |  | 2009-03-11 | 2009-03-12 | 0.71d? | 52.43d | 0d |  |  | Marlize [70%] | 4h |  | 150 | MDSS101 |
| 105 | 1.20.2 | Test: changing visibility of fields in GUI |  | 1.43h | 2009-04-09 | 2009-04-09 | 104 |  |  | 2009-03-12 | 2009-03-12 | 1.43h | 52.43d | 0d |  |  | Marlize [70%] | 1h |  | 151 | MDSS117 |
| 106 | 1.20.3 | Submit defects: changing visibility of fields in GUI |  | 2.86h | 2009-04-09 | 2009-04-09 | 105 |  |  | 2009-03-12 | 2009-03-12 | 2.86h | 52.43d | 0d |  |  | Marlize [70%] | 2h |  | 152 | MDSS117 |
| 107 | 1.20.4 | Test: Resistance cut-off values |  | 1h | 2009-03-16 A | 2009-03-16 A |  | 100% |  | 2009-03-13 | 2009-03-13 | 1h |  |  | start no earlier than 2009-03-14 |  | Mike | 1h | 1h | 179 | MDSS009 |
| 108 | 1.20.5 | Submit defects: Resistance cut-off values |  | 1h | 2009-03-16 A | 2009-03-16 A | 107 | 100% |  | 2009-03-16 | 2009-03-16 | 1h |  |  |  |  | Mike | 1h | 1h | 180 | MDSS009 |
| 109 | 1.20.6 | Test:Species identification |  | 1h | 2009-03-16 A | 2009-03-16 A | 108 | 100% |  | 2009-03-10 | 2009-03-10 | 1h |  |  |  |  | Mike | 1h | 1h | 162 | MDSS012 |
| 110 | 1.20.7 | Submit defects: Species identification |  | 1h | 2009-03-16 A | 2009-03-16 A | 109 | 100% |  | 2009-03-11 | 2009-03-11 | 1h |  |  |  |  | Mike | 1h | 1h | 163 | MDSS012 |
| 111 | 1.20.8 | Write change request: Mechanisms |  | 1h | 2009-03-16 A | 2009-03-16 A | 110 | 100% |  | 2009-03-12 | 2009-03-12 | 4h |  |  |  |  | Mike | 1h | 1h | 172 | MDSS012 |
| 112 | 1.20.9 | Test: Submit a mosquito collection |  | 0.13d? | 2009-03-16 A | 2009-03-16 A | 111 | 100% |  | 2009-03-09 | 2009-03-09 | 0.12d? |  |  |  |  | Mike | 1.04h | 1.04h | 153 | MDSS024 |
| 113 | 1.20.10 | Submit defects: Submit a mosquito collection |  | 1h | 2009-03-16 A | 2009-03-16 A | 112 | 100% |  | 2009-03-09 | 2009-03-09 | 2h |  |  |  |  | Mike | 1h | 1h | 154 | MDSS024 |
| 114 | 1.20.11 | Write change request: Collections |  | 1h | 2009-03-23 A | 2009-03-23 A | 113 | 100% |  | 2009-03-10 | 2009-03-10 | 4h |  |  | finish no earlier than 2009-03-23 |  | Miguel | 1h | 1h | 159 | MDSS024 |
| 115 | 1.20.12 | Test: search/update/delete record |  | 1h | 2009-03-17 A | 2009-03-17 A | 114 | 100% |  | 2009-03-09 | 2009-03-09 | 1h |  |  |  |  | Mike | 1h | 1h | 155 | MDSS75 |
| 116 | 1.20.13 | Submit defects: search/update/delete |  | 1h | 2009-03-17 A | 2009-03-17 A | 115 | 100% |  | 2009-03-09 | 2009-03-09 | 2h |  |  |  |  | Mike | 1h | 1h | 156 |  |
| 117 | 1.20.14 | Test: Efficacy assay |  | 0.12d? | 2009-03-17 A | 2009-03-17 A | 116 | 100% |  | 2009-03-16 | 2009-03-16 | 0.12d? |  |  |  |  | Mike | 1h | 1h | 182 | MDSS025 |
| 118 | 1.20.15 | Submit defects: Efficacy assay |  | 1h | 2009-03-17 A | 2009-03-17 A | 117 | 100% |  | 2009-03-16 | 2009-03-16 | 1h |  |  |  |  | Mike | 1h | 1h | 183 | MDSS025 |
| 119 | 1.20.16 | Write change request: Efficacy assay |  | 1h | 2009-03-23 A | 2009-03-23 | 118 | 70% | 0.3h | 2009-03-16 | 2009-03-17 | 2h | 71d |  | finish no earlier than 2009-03-23 |  | Miguel | 1h | 0.7h | 184 | MDSS025 |
| 120 | 1.20.17 | Test: Adult discriminating dose assay |  | 0.12d? | 2009-03-17 A | 2009-03-17 A | 119 | 100% |  | 2009-03-12 | 2009-03-13 | 0.25d? |  |  |  |  | Mike | 1h | 1h | 173 | MDSS004 |
| 121 | 1.20.18 | Submit defects: Adult discriminating dose assay |  | 1h | 2009-03-17 A | 2009-03-17 A | 120 | 100% |  | 2009-03-13 | 2009-03-13 | 2h |  |  |  |  | Mike | 1h | 1h | 174 | MDSS004 |
| 122 | 1.20.19 | Test: Adult knock down assay |  | 0.12d? | 2009-03-25 | 2009-03-25 | 121 |  |  | 2009-03-13 | 2009-03-13 | 0.12d? | 68.88d | 0d | start no earlier than 2009-03-25 |  | Mike | 1h |  | 177 | MDSS006 |
| 123 | 1.20.20 | Submit defects: Adult knock down assay |  | 1h | 2009-03-25 | 2009-03-25 | 122 |  |  | 2009-03-13 | 2009-03-13 | 1h | 68.88d | 0d |  |  | Mike | 1h |  | 178 | MDSS006 |
| 124 | 1.20.21 | Test: Larvae discriminating dose assay |  | 0.12d? | 2009-03-25 | 2009-03-25 | 123 |  |  | 2009-03-13 | 2009-03-13 | 0.12d? | 68.88d | 0d |  |  | Mike | 1h |  | 175 | MDSS008 |
| 125 | 1.20.22 | Submit defects: Larvae discriminating dose assay |  | 1h | 2009-03-25 | 2009-03-25 | 124 |  |  | 2009-03-13 | 2009-03-13 | 1h | 68.88d | 0d |  |  | Mike | 1h |  | 176 | MDSS008 |
| 126 | 1.20.23 | Write change request: resistance assays |  | 1h | 2009-03-25 | 2009-03-25 | 125 |  |  | 2009-03-16 | 2009-03-16 | 4h | 68.88d | 0d |  |  | Mike | 1h |  | 181 |  |
| 127 | 1.20.24 | Test: Submit collection points |  | 1h | 2009-03-25 | 2009-03-25 | 126 |  |  | 2009-03-09 | 2009-03-09 | 1h | 68.88d | 0d |  |  | Mike | 1h |  | 157 | MDSS016 |
| 128 | 1.20.25 | Submit defects: Submit collection points |  | 1h | 2009-03-25 | 2009-03-25 | 127 |  |  | 2009-03-09 | 2009-03-09 | 1h | 68.88d | 0d |  |  | Mike | 1h |  | 158 | MDSS016 |
| 129 | 1.20.26 | Test: Import assay and collection data |  | 1h | 2009-03-25 | 2009-03-25 | 86, 128 |  |  | 2009-03-10 | 2009-03-10 | 1h | 68.88d | 0d |  |  | Mike | 1h |  | 160 | MDSS102 |
| 130 | 1.20.27 | Submit defects: generic import functionality |  | 1h | 2009-03-26 | 2009-03-26 | 129 |  |  | 2009-03-10 | 2009-03-10 | 2h | 68.88d |  |  |  | Mike | 1h |  | 161 | MDSS102 |

| ID | WBS | Task | Duration | Start | Finish | Predecessors | Complete | Remaining | Baseline start | Baseline finish | Baseline duration | Total slack | Free slack | Constraint | Resources | Work | Actual work | Text1 | Text4 |
| --- | --- | --- | --- | --- | --- | --- | --- | --- | --- | --- | --- | --- | --- | --- | --- | --- | --- | --- | --- |
| 131 | 1.20.28 | **Test: Entomology dynamic query and reports** | 5.89d | 2009-04-09 | 2009-04-17 | 106 |  |  | 2009-03-12 | 2009-03-20 | 5.89d | 52.43d |  |  |  | 33h |  | MDSS145 | 185 |
| 132 | 1.20.28.1 | Test: add Geo-entity fields | 1.43h | 2009-04-09 | 2009-04-09 |  |  |  | 2009-03-12 | 2009-03-12 | 1.43h | 52.43d | 0d |  | Marlize [70%] | 1h |  | MDSS145 | 186 |
| 133 | 1.20.28.2 | Test: add other fields | 1.43h | 2009-04-09 | 2009-04-10 | 132 |  |  | 2009-03-12 | 2009-03-13 | 1.43h | 52.43d | 0d |  | Marlize [70%] | 1h |  | MDSS145 | 187 |
| 134 | 1.20.28.3 | Test: add functions | 1.43h | 2009-04-10 | 2009-04-10 | 133 |  |  | 2009-03-13 | 2009-03-13 | 1.43h | 52.43d | 0d |  | Marlize [70%] | 1h |  | MDSS145 | 188 |
| 135 | 1.20.28.4 | Test: date ranges on collection date or assay date | 1.43h | 2009-04-10 | 2009-04-10 | 134 |  |  | 2009-03-13 | 2009-03-13 | 1.43h | 52.43d | 0d |  | Marlize [70%] | 1h |  | MDSS145 | 189 |
| 136 | 1.20.28.5 | Submit defects: Build query | 2.86h | 2009-04-10 | 2009-04-10 | 135 |  |  | 2009-03-13 | 2009-03-13 | 2.86h | 52.43d | 0d |  | Marlize [70%] | 2h |  | MDSS145 | 190 |
| 137 | 1.20.28.6 | Test: save query | 1.43h | 2009-04-10 | 2009-04-10 | 136 |  |  | 2009-03-13 | 2009-03-13 | 1.43h | 52.43d | 0d |  | Marlize [70%] | 1h |  | MDSS056 | 191 |
| 138 | 1.20.28.7 | Test: run a saved query | 1.43h | 2009-04-10 | 2009-04-13 | 137 |  |  | 2009-03-13 | 2009-03-16 | 1.43h | 52.43d | 0d |  | Marlize [70%] | 1h |  | MDSS056 | 192 |
| 139 | 1.20.28.8 | Test: modify a saved query | 1.43h | 2009-04-13 | 2009-04-13 | 138 |  |  | 2009-03-16 | 2009-03-16 | 1.43h | 52.43d | 0d |  | Marlize [70%] | 1h |  | MDSS056 | 193 |
| 140 | 1.20.28.9 | Test: export query results | 1.43h | 2009-04-13 | 2009-04-13 | 139 |  |  | 2009-03-16 | 2009-03-16 | 1.43h | 52.43d | 0d |  | Marlize [70%] | 1h |  | MDSS071 | 194 |
| 141 | 1.20.28.10 | Test: dump functionality | 1.43h | 2009-04-13 | 2009-04-13 | 140 |  |  | 2009-03-16 | 2009-03-16 | 1.43h | 52.43d | 0d |  | Marlize [70%] | 1h |  |  | 195 |
| 142 | 1.20.28.11 | Submit defects: deploy query | 2.86h | 2009-04-13 | 2009-04-14 | 141 |  |  | 2009-03-16 | 2009-03-17 | 2.86h | 52.43d | 0d |  | Marlize [70%] | 2h |  |  | 196 |
| 143 | 1.20.28.12 | Test: create thematic map from query | 11.43h | 2009-04-14 | 2009-04-15 | 142 |  |  | 2009-03-17 | 2009-03-18 | 11.43h | 52.43d | 0d |  | Marlize [70%] | 8h |  |  | 197 |
| 144 | 1.20.28.13 | Test: find query results in BIRT | 1.43h | 2009-04-15 | 2009-04-15 | 143 |  |  | 2009-03-18 | 2009-03-18 | 1.43h | 52.43d | 0d |  | Marlize [70%] | 1h |  | MDSS062 | 198 |
| 145 | 1.20.28.14 | Test: create a report template (table) | 2.86h | 2009-04-15 | 2009-04-15 | 144 |  |  | 2009-03-18 | 2009-03-18 | 2.86h | 52.43d | 0d |  | Marlize [70%] | 2h |  | MDSS062 | 199 |
| 146 | 1.20.28.15 | Test: Link a report template to query | 1.43h | 2009-04-15 | 2009-04-16 | 145 |  |  | 2009-03-18 | 2009-03-19 | 1.43h | 52.43d | 0d |  | Marlize [70%] | 1h |  | MDSS056 | 200 |
| 147 | 1.20.28.16 | Test: view/print/save a report | 1.43h | 2009-04-16 | 2009-04-16 | 146 |  |  | 2009-03-19 | 2009-03-19 | 1.43h | 52.43d | 0d |  | Marlize [70%] | 1h |  | MDSS062 | 201 |
| 148 | 1.20.28.17 | Test: change linked report | 1.43h | 2009-04-16 | 2009-04-16 | 147 |  |  | 2009-03-19 | 2009-03-19 | 1.43h | 52.43d | 0d |  | Marlize [70%] | 1h |  | MDSS062 | 202 |
| 149 | 1.20.28.18 | Submit defects: deploy query | 2.86h | 2009-04-16 | 2009-04-16 | 148 |  |  | 2009-03-19 | 2009-03-19 | 2.86h | 52.43d | 0d |  | Marlize [70%] | 2h |  |  | 203 |
| 150 | 1.20.28.19 | Write change request: Dynamic query | 5.71h | 2009-04-16 | 2009-04-17 | 149 |  |  | 2009-03-19 | 2009-03-20 | 5.71h | 52.43d |  |  | Marlize [70%] | 4h |  |  | 204 |
| 151 | 1.21 | **Finalise Query Use Cases** | 28.43d | 2009-02-23 A | 2009-04-02 |  | 58% | 12.05d | 2009-02-13 | 2009-04-08 | 38.11d | 47.86d |  |  |  | 77.6h | 46.4h |  | 205 |
| 152 | 1.21.1 | UC: Individual Cases - query | 11.43h | 2009-02-23 A | 2009-02-24 A |  | 100% |  | 2009-02-18 | 2009-02-20 | 11.43h |  |  | start no earlier than 2009-02-21 | Miguel [70%] | 8h | 8h | MDSS128 | 208 |
| 153 | 1.21.2 | UC: Aggregated Cases - query | 11.43h | 2009-02-25 A | 2009-02-27 A | 83 | 100% |  | 2009-02-13 | 2009-02-17 | 11.43h |  |  | start no earlier than 2009-02-24 | Miguel [70%] | 8h | 8h | MDSS129 | 206 |
| 154 | 1.21.3 | UC: Indicator survey - query | 11.43h | 2009-03-03 A | 2009-03-04 A | 153 | 100% |  | 2009-02-17 | 2009-02-18 | 11.43h |  |  | start no earlier than 2009-03-03 | Miguel [70%] | 8h | 8h | MDSS140 | 207 |
| 155 | 1.21.4 | UC: IRS - query | 17.14h | 2009-03-12 A | 2009-03-16 A | 152, 83 | 100% |  | 2009-02-20 | 2009-02-24 | 22.86h |  |  | finish no earlier than 2009-03-16 | Marlize [93.3%] | 16h | 16h | MDSS132 | 209 |
| 156 | 1.21.5 | UC: ITN Facility distribution - query | 11.43h | 2009-03-23 A | 2009-03-24 |  | 80% | 2.29h | 2009-04-01 | 2009-04-02 | 11.43h | 49.57d | 0d | start no earlier than 2009-03-23 | Marlize [70%] | 8h | 6.4h | MDSS135 | 210 |
| 157 | 1.21.6 | UC: ITN Community distribution - query | 8h | 2009-03-24 | 2009-03-25 | 156 |  |  |  |  |  | 49.57d | 0d |  | Marlize [70%] | 5.6h |  | MDSS137 |  |
| 158 | 1.21.7 | UC: ITN household use - query | 11.43h | 2009-03-25 | 2009-03-26 | 157 |  |  | 2009-04-02 | 2009-04-06 | 11.43h | 49.57d | 0d |  | Marlize [70%] | 8h |  | MDSS138 | 211 |
| 159 | 1.21.8 | UC: IPT individual - query | 11.43h | 2009-03-26 | 2009-03-30 | 158 |  |  | 2009-04-06 | 2009-04-07 | 11.43h | 49.57d | 0d |  | Marlize [70%] | 8h |  | MDSS130 | 212 |
| 160 | 1.21.9 | UC: IPT aggregated - query | 11.43h | 2009-04-01 | 2009-04-02 | 159 |  |  | 2009-04-07 | 2009-04-08 | 11.43h | 47.86d | 0d | start no earlier than 2009-04-01 | Marlize [70%] | 8h |  | MDSS131 | 213 |

| ID | WBS | Task | Duration | Start | Finish | Predecessors | Complete | Remaining | Baseline start | Baseline finish | Baseline duration | Total slack | Free slack | Constraint | Resources | Work | Actual work | Cost | Baseline cost | Text4 | Text1 | Text2 |
| --- | --- | --- | --- | --- | --- | --- | --- | --- | --- | --- | --- | --- | --- | --- | --- | --- | --- | --- | --- | --- | --- | --- |
| 161 | 1.22 | **Complete Development** | 65.06d? | 2009-03-09 A | 2009-06-08 |  | 7% | 60.74d? | 2009-03-02 | 2009-05-28 | 63.25d? | 16.94d |  |  |  | 1384h | 44.59h | 89,240 | 172,960 | 214 |  |  |
| 162 | 1.22.1 | **Generic Development** | 44d? | 2009-03-09 A | 2009-05-07 |  | 26% | 32.38d? | 2009-03-05 | 2009-04-14 | 28.76d? | 38d |  |  |  | 288h | 44.59h | 12,880 | 31,280 | 215 |  |  |
| 163 | 1.22.1.1 | Dev: Reconstruct saved query | 47.06h | 2009-03-30 | 2009-04-06 | 6, 14 |  |  | 2009-03-12 | 2009-03-20 | 47.06h | 16.94d | 0d |  | Nathan [85%] | 40h |  | 4,600 | 4,600 | 216 | SYS06-4 |  |
| 164 | 1.22.1.2 | Dev: Configure system variables | 9.41h | 2009-04-06 | 2009-04-08 | 50, 163 |  |  | 2009-03-23 | 2009-03-24 | 8h | 16.94d | 0d |  | Nathan [85%] | 8h |  | 920 | 920 | 218 | MDSS109 | 1 day |
| 165 | 1.22.1.3 | Dev: maintain catalogues | 28.23h | 2009-04-08 | 2009-04-13 | 164 |  |  | 2009-03-27 | 2009-04-02 | 28.23h | 24.65d | 0d |  | Nathan [85%] | 24h |  | 2,760 | 2,760 | 219 | MDSS103 |  |
| 166 | 1.22.1.4 | Dev: Epi week - set or change | 16h | 2009-04-07 | 2009-04-08 | 41 |  |  | 2009-03-09 | 2009-03-12 | 18.82h | 32d | 0d | start no earlier than 2009-03-17 | Eric | 16h |  |  | 1,840 | 220 | MDSS119 | 2 days |
| 167 | 1.22.1.5 | Dev: define season start and end dates | 16h | 2009-04-09 | 2009-04-10 | 166 |  |  | 2009-03-12 | 2009-03-16 | 18.82h | 32d | 0d |  | Eric | 16h |  |  | 1,840 | 221 | MDSS127 | 2 days |
| 168 | 1.22.1.6 | Dev: enter/maintain people in the system | 16h | 2009-04-13 | 2009-04-14 | 167 |  |  | 2009-03-16 | 2009-03-19 | 18.82h | 32d | 0d |  | Eric | 16h |  |  | 1,840 | 222 | MDSS114 |  |
| 169 | 1.22.1.7 | Dev: create synonyms for imported Geo entities | 32h | 2009-04-27 | 2009-04-30 | 170, 198 |  |  | 2009-03-13 | 2009-03-19 | 32h | 32d | 0d |  | Eric | 32h |  |  | 3,680 | 223 | MDSS112 |  |
| 170 | 1.22.1.8 | Dev: User Admin Screen for account management | 3.53d? | 2009-04-13 | 2009-04-17 | 41, 165 |  |  | 2009-04-06 | 2009-04-08 | 3d? | 24.65d | 0d | start no earlier than 2009-03-17 | Nathan [85%] | 24h |  | 2,760 |  | 224 |  | 3 days |
| 171 | 1.22.1.9 | Dev: user Admin Screen for Role assignment | 2.35d? | 2009-04-17 | 2009-04-21 | 170 |  |  | 2009-04-02 | 2009-04-06 | 2.35d? | 24.65d | 0d | start no earlier than 2009-03-06 | Nathan [85%] | 16h |  | 1,840 | 1,840 | 225 | MDSS142 | 2 days |
| 172 | 1.22.1.10 | Dev: Add localisable character attributes | 16h | 2009-05-01 | 2009-05-04 | 171, 169 |  |  | 2009-04-06 | 2009-04-09 | 18.82h | 32d | 0d |  | Eric | 16h |  |  | 1,840 | 226 | SYS01-1 |  |
| 173 | 1.22.1.11 | Dev: CRUD on localisable fields | 128h | 2009-03-09 A | 2009-03-30 | 36 | 80% | 25.6h | 2009-03-05 | 2009-03-12 | 48h | 29.24d | 0d | finish no earlier than 2009-03-30 | Eric | 48h | 44.59h |  |  | 227 | SYS01-2 |  |
| 174 | 1.22.1.12 | Dev: CRUD screen for defining geography universals | 24h | 2009-05-05 | 2009-05-07 | 172 |  |  | 2009-04-09 | 2009-04-14 | 28.23h | 38d |  |  | Naifeh | 24h |  |  | 2,760 | 228 | SYS07-3 |  |
| 175 | 1.22.1.13 | Change geo root | 8h | 2009-04-08 | 2009-04-09 | 164, 13 |  |  | 2009-04-01 | 2009-04-03 | 20h | 16.94d | 0d |  | Naifeh | 8h |  |  | 1,840 | 230 | MDSS122 |  |
| 176 | 1.22.2 | **Indicator survey** | 20.06d | 2009-03-26 | 2009-04-23 |  |  |  | 2009-03-19 | 2009-03-31 | 8d | 16.94d |  |  |  | 72h |  | 3,680 | 8,280 | 231 |  |  |
| 177 | 1.22.2.1 | Dev: BE - Indicator survey - CRUD | 16h | 2009-03-26 | 2009-03-27 | 181 |  |  |  |  |  | 22.5d | 0d | finish no earlier than 2009-03-26 | Justin | 16h |  | 1,840 |  | 367 | MDSS026 |  |
| 178 | 1.22.2.2 | Dev: GUI - Indicator survey - CRUD | 16h | 2009-03-30 | 2009-03-31 | 177, 182 |  |  | 2009-03-24 | 2009-03-31 | 40h | 25.25d | 1d | finish no earlier than 2009-03-30 | Darrell | 16h |  | 1,840 | 3,680 | 232 | MDSS026 |  |
| 179 | 1.22.2.3 | Dev - Indicator survey - dynamic query | 40h | 2009-04-16 | 2009-04-23 | 184 |  |  | 2009-03-19 | 2009-03-27 | 50h | 16.94d | 0d | start no earlier than 2009-04-04 | Naifeh | 40h |  |  | 4,600 | 233 | MDSS140 |  |
| 180 | 1.22.3 | **Case Surveilance** | 46.35d | 2009-03-24 | 2009-05-27 |  |  |  | 2009-03-02 | 2009-05-07 | 48.25d | 22.5d |  |  |  | 352h |  | 27,600 | 51,520 | 234 |  |  |
| 181 | 1.22.3.1 | Dev: BE - aggregated cases - CRUD | 16h | 2009-03-24 | 2009-03-25 | 49 |  |  | 2009-03-02 | 2009-03-06 | 40h | 22.5d | 0d | start no earlier than 2009-03-24 | Justin | 16h |  | 1,840 | 4,600 | 235 | MDSS002 | 5 days |
| 182 | 1.22.3.2 | Dev: GUI - aggregated cases - CRUD | 16h | 2009-03-26 | 2009-03-27 | 181, 50 |  |  |  |  |  | 25.25d | 0d | finish no earlier than 2009-03-26 | Darrell | 16h |  | 1,840 |  | 368 | MDSS002 |  |
| 183 | 1.22.3.3 | Dev: calculate CFR | 8h | 2009-05-05 | 2009-05-05 | 172 |  |  | 2009-03-19 | 2009-03-25 | 37.65h | 32d | 0d |  | Eric | 8h |  |  | 3,680 | 236 | MDSS087 | 4 days |
| 184 | 1.22.3.4 | Dev: aggregated cases - dynamic query | 40h | 2009-04-09 | 2009-04-16 | 153, 175 |  |  | 2009-03-09 | 2009-03-13 | 40h | 16.94d | 0d | start no earlier than 2009-03-17 | Naifeh | 40h |  |  | 4,600 | 237 | MDSS129 | 5 days |
| 185 | 1.22.3.5 | Dev: Input or modify population data | 37.65h | 2009-04-21 | 2009-04-28 | 171 |  |  | 2009-03-16 | 2009-03-19 | 32h | 24.65d | 0d | start no earlier than 2009-03-05 | Nathan [85%] | 32h |  | 3,680 | 3,680 | 238 | MDSS003 | 4 days |
| 186 | 1.22.3.6 | Dev: Import population or annual growth rate data | 47.06h | 2009-04-28 | 2009-05-06 | 185 |  |  | 2009-03-20 | 2009-03-26 | 40h | 24.65d | 0d |  | Nathan [85%] | 40h |  | 4,600 | 4,600 | 239 | MDSS083 |  |
| 187 | 1.22.3.7 | Dev: input/modify outbreak thresholds | 37.65h | 2009-05-06 | 2009-05-12 | 186 |  |  | 2009-03-27 | 2009-04-01 | 32h | 24.65d | 0d |  | Nathan [85%] | 32h |  | 3,680 | 3,680 | 240 | MDSS105 | 5 days |
| 188 | 1.22.3.8 | Dev :import outbreak thresholds | 37.65h | 2009-05-12 | 2009-05-19 | 187 |  |  | 2009-04-02 | 2009-04-07 | 32h | 24.65d | 0d |  | Nathan [85%] | 32h |  | 3,680 | 3,680 | 241 | MDSS085 | 5 days |
| 189 | 1.22.3.9 | Dev: Calculate annual or seasonal population | 47.06h | 2009-05-19 | 2009-05-27 | 223, 188 |  |  | 2009-04-29 | 2009-05-07 | 50h | 24.65d |  |  | Nathan [85%] | 40h |  | 4,600 | 4,600 | 242 | MDSS073 | 5 days |
| 190 | 1.22.3.10 | Dev: calculate incidence | 8h | 2009-05-06 | 2009-05-06 | 183 |  |  | 2009-03-25 | 2009-04-02 | 47.06h | 32d | 0d |  | Eric | 8h |  |  | 4,600 | 243 | MDSS086 | 5 days |
| 191 | 1.22.3.11 | Dev: BE - individual cases - CRUD | 16h | 2009-03-30 | 2009-03-31 | 177 |  |  |  |  |  | 22.5d | 0d | start no earlier than 2009-03-26 | Justin | 16h |  | 1,840 |  | 369 | MDSS001 |  |
| 192 | 1.22.3.12 | Dev: GUI - individual cases - CRUD | 16h | 2009-04-02 | 2009-04-03 | 191, 178 |  |  | 2009-04-08 | 2009-04-14 | 40h | 24.25d | 0d | start no earlier than 2009-04-02 | Darrell | 16h |  | 1,840 | 4,600 | 244 | MDSS001 | 5 days |
| 193 | 1.22.3.13 | Dev: Outbreak notification | 16h | 2009-05-07 | 2009-05-08 | 190 |  |  | 2009-04-02 | 2009-04-10 | 47.06h | 32d | 0d |  | Eric | 16h |  |  | 4,600 | 245 | MDSS124 | 5 days |
| 194 | 1.22.3.14 | Dev: individual case - dynamic query | 40h | 2009-04-23 | 2009-04-30 | 192, 152, 179 |  |  | 2009-04-15 | 2009-04-21 | 40h | 16.94d | 0d |  | Naifeh | 40h |  |  | 4,600 | 246 | MDSS128 | 5 days |

| ID | WBS | Task | Duration | Start | Finish | Predecessors | Baseline start | Baseline finish | Baseline duration | Total slack | Free slack | Constraint | Resources | Work | Cost | Baseline cost | Text4 | Text1 | Text2 | Text3 |
| --- | --- | --- | --- | --- | --- | --- | --- | --- | --- | --- | --- | --- | --- | --- | --- | --- | --- | --- | --- | --- |
| 195 | 1.22.4 | **Intervention monitoring** | 48.06d | 2009-04-01 | 2009-06-08 |  | 2009-03-27 | 2009-05-28 | 43.75d | 16.94d |  |  |  | 640h | 41,400 | 75,440 | 247 |  |  |  |
| 196 | 1.22.4.1 | **IRS** | 25.06d | 2009-04-01 | 2009-05-06 |  | 2009-03-27 | 2009-05-21 | 38.75d | 22.5d |  |  |  | 216h | 13,800 | 28,520 | 248 |  |  |  |
| 197 | 1.22.4.1.1 | Dev: enter/maintain spray team member | 32h | 2009-04-15 | 2009-04-20 | 168 | 2009-04-22 | 2009-04-27 | 32h | 32d | 0d | start no earlier than 2009-03-20 | Eric | 32h |  | 3,680 | 249 | MDSS113 |  |  |
| 198 | 1.22.4.1.2 | Dev: enter/maintain IRS teams | 32h | 2009-04-21 | 2009-04-24 | 197 | 2009-04-28 | 2009-05-01 | 32h | 32d | 0d |  | Eric | 32h |  | 3,680 | 250 | MDSS141 |  |  |
| 199 | 1.22.4.1.3 | Dev: BE - input or modify IRS targets | 24h | 2009-04-01 | 2009-04-03 | 191 | 2009-03-27 | 2009-04-02 | 30h | 22.5d | 0d |  | Justin | 24h | 2,760 | 2,760 | 251 | MDSS028 |  |  |
| 200 | 1.22.4.1.4 | Dev: GUI - input or modify IRS targets | 24h | 2009-04-06 | 2009-04-08 | 199, 192 | 2009-05-07 | 2009-05-12 | 30h | 24.25d | 0d | start no earlier than 2009-04-01 | Darrell | 24h | 2,760 | 2,760 | 252 | MDSS028 |  |  |
| 201 | 1.22.4.1.5 | Dev: BE - Configure items relating to application rate | 24h | 2009-04-06 | 2009-04-08 | 199 | 2009-04-02 | 2009-04-10 | 50h | 22.5d | 0d |  | Justin | 24h | 2,760 | 4,600 | 253 | MDSS106 |  |  |
| 202 | 1.22.4.1.6 | Dev: GUI - Configure items relating to application rate | 16h | 2009-04-09 | 2009-04-10 | 200, 201 | 2009-05-13 | 2009-05-15 | 20h | 24.25d | 0d |  | Darrell | 16h | 1,840 | 1,840 | 254 | MDSS106 |  |  |
| 203 | 1.22.4.1.7 | Dev: BE - IRS - CRUD | 16h | 2009-04-09 | 2009-04-10 | 201 | 2009-04-14 | 2009-04-20 | 28.23h | 22.5d | 0d | start no earlier than 2009-03-23 | Justin | 16h | 1,840 | 2,760 | 255 | MDSS027 |  |  |
| 204 | 1.22.4.1.8 | Dev: GUI - IRS - CRUD | 16h | 2009-04-13 | 2009-04-14 | 203, 202 |  |  |  | 24.25d | 1d | start no earlier than 2009-04-10 | Darrell | 16h | 1,840 |  | 370 | MDSS027 |  |  |
| 205 | 1.22.4.1.9 | Dev: IRS - dynamic query | 32h | 2009-04-30 | 2009-05-06 | 155, 194 | 2009-04-10 | 2009-04-17 | 40h | 16.94d | 0d | start no earlier than 2009-03-16 | Naifeh | 32h |  | 3,680 | 257 | MDSS132 |  |  |
| 206 | 1.22.4.2 | **Larvaciding** | 5.75d | 2009-04-16 | 2009-04-24 |  | 2009-04-10 | 2009-04-17 | 4.71d | 22.5d |  |  |  | 32h | 3,680 | 3,680 | 258 |  |  |  |
| 207 | 1.22.4.2.1 | Dev: BE - larviciding - CRUD | 16h | 2009-04-16 | 2009-04-20 | 222 |  |  |  | 24.25d | 0d | start no earlier than 2009-03-14 | Justin | 16h | 1,840 |  | 371 | MDSS031 |  |  |
| 208 | 1.22.4.2.2 | Dev: GUI - larviciding - CRUD | 16h | 2009-04-22 | 2009-04-24 | 207, 223 | 2009-04-10 | 2009-04-17 | 37.65h | 22.5d | 0d | start no earlier than 2009-03-17 | Darrell | 16h | 1,840 | 3,680 | 259 | MDSS031 | 8 days |  |
| 209 | 1.22.4.3 | **ITN** | 26.31d | 2009-04-20 | 2009-05-27 |  | 2009-04-17 | 2009-05-22 | 25.53d | 16.94d |  |  |  | 216h | 11,040 | 23,000 | 260 |  |  |  |
| 210 | 1.22.4.3.1 | Dev: BE - ITN aggregated data - CRUD | 16h | 2009-04-20 | 2009-04-22 | 207 | 2009-04-17 | 2009-04-27 | 47.06h | 24.25d | 0d |  | Justin | 16h | 1,840 | 4,600 | 261 | MDSS080 | 5 days |  |
| 211 | 1.22.4.3.2 | Dev: GUI - ITN aggregated data - CRUD | 16h | 2009-04-24 | 2009-04-28 | 210, 208 |  |  |  | 22.5d | 0d |  | Darrell | 16h | 1,840 |  | 372 | MDSS080 |  |  |
| 212 | 1.22.4.3.3 | Dev: ITN aggregated data - query | 40h | 2009-05-06 | 2009-05-13 | 211, 205 | 2009-04-27 | 2009-04-28 | 8h | 16.94d | 0d |  | Naifeh | 40h |  |  | 262 | MDSS136 |  |  |
| 213 | 1.22.4.3.4 | Dev: BE - ITN facility distribution - CRUD | 16h | 2009-04-22 | 2009-04-24 | 210 | 2009-04-28 | 2009-05-07 | 56.47h | 26.25d | 0d |  | Justin | 16h | 1,840 | 5,520 | 263 | MDSS030 | 5 days |  |
| 214 | 1.22.4.3.5 | Dev: GUI - ITN facility distribution - CRUD | 16h | 2009-04-28 | 2009-04-30 | 213, 211 |  |  |  | 24.5d | 0d |  | Darrell | 16h | 1,840 |  | 373 | MDSS030 |  |  |
| 215 | 1.22.4.3.6 | Dev: BE - ITN community distribution - CRUD | 8h | 2009-04-24 | 2009-04-27 | 213 | 2009-05-07 | 2009-05-13 | 37.65h | 27.25d | 0d |  | Justin | 8h | 920 | 3,680 | 264 | MDSS079 | 5 days |  |
| 216 | 1.22.4.3.7 | Dev: GUI - ITN community distribution - CRUD | 8h | 2009-04-30 | 2009-05-01 | 215, 214 |  |  |  | 24.5d | 0d |  | Darrell | 8h | 920 |  | 374 | MDSS079 |  |  |
| 217 | 1.22.4.3.8 | Dev: ITN by facility/community - query | 40h | 2009-05-13 | 2009-05-20 | 156, 212, 216 | 2009-05-13 | 2009-05-14 | 8h | 16.94d | 0d |  | Naifeh | 40h |  |  | 265 | MDSS135 |  |  |
| 218 | 1.22.4.3.9 | Dev: BE - ITN by household - CRUD | 8h | 2009-04-27 | 2009-04-28 | 215 | 2009-05-14 | 2009-05-22 | 47.06h | 32.25d | 0d | start no earlier than 2009-03-21 | Justin | 8h | 920 | 4,600 | 266 | MDSS082 | 5 days | 10 |
| 219 | 1.22.4.3.10 | Dev: GUI - ITN by household - CRUD | 8h | 2009-05-01 | 2009-05-04 | 218, 216 |  |  |  | 31d | 0d |  | Darrell | 8h | 920 |  | 375 | MDSS082 |  | 10 |
| 220 | 1.22.4.3.11 | Dev: ITN by household - query | 40h | 2009-05-20 | 2009-05-27 | 198, 158, 217 | 2009-05-04 | 2009-05-08 | 40h | 16.94d | 0d | start no earlier than 2009-04-10 | Naifeh | 40h |  | 4,600 | 267 | MDSS138 |  | 10 |

| ID | WBS | Task | Type | Duration | Start | Finish | Predecessors | Complete | Remaining | Baseline start | Baseline finish | Baseline duration | Total slack | Free slack | Constraint | Resources | Work | Actual work | Cost | Baseline cost | Text4 | Text1 | Text3 | Text2 |
| --- | --- | --- | --- | --- | --- | --- | --- | --- | --- | --- | --- | --- | --- | --- | --- | --- | --- | --- | --- | --- | --- | --- | --- | --- |
| 221 | 1.22.4.4 | **Intervention Planning** |  | 7.5d | 2009-04-13 | 2009-04-22 |  |  |  | 2009-04-17 | 2009-04-28 | 7.5d | 22.5d |  |  |  | 48h |  | 5,520 | 5,520 | 268 |  |  |  |
| 222 | 1.22.4.4.1 | Dev: BE - Intervention planning |  | 30h | 2009-04-13 | 2009-04-16 | 203 |  |  | 2009-04-17 | 2009-04-23 | 30h | 22.5d | 0d |  | Justin [80%] | 24h |  | 2,760 | 2,760 | 269 | MDSS077 |  |  |
| 223 | 1.22.4.4.2 | Dev: GUI - Intervention planning |  | 30h | 2009-04-16 | 2009-04-22 | 222, 204 |  |  | 2009-04-23 | 2009-04-28 | 30h | 22.5d | 0d | start no earlier than 2009-04-16 | Darrell [80%] | 24h |  | 2,760 | 2,760 | 270 | MDSS077 |  |  |
| 224 | 1.22.4.5 | **IPT** |  | 28.31d | 2009-04-28 | 2009-06-08 |  |  |  | 2009-04-23 | 2009-05-28 | 25d | 16.94d |  |  |  | 128h |  | 7,360 | 14,720 | 271 |  |  |  |
| 225 | 1.22.4.5.1 | Dev: BE - IPT aggregated - CRUD |  | 20h | 2009-04-28 | 2009-05-01 | 218 |  |  | 2009-04-23 | 2009-04-27 | 20h | 32.25d | 0d |  | Justin [80%] | 16h |  | 1,840 | 1,840 | 272 | MDSS069 |  |  |
| 226 | 1.22.4.5.2 | Dev: GUI - IPT aggregated - CRUD |  | 20h | 2009-05-04 | 2009-05-06 | 225, 219 |  |  | 2009-05-21 | 2009-05-25 | 20h | 31d | 0d |  | Darrell [80%] | 16h |  | 1,840 | 1,840 | 273 | MDSS069 |  |  |
| 227 | 1.22.4.5.3 | Dev: IPT aggregated - query |  | 32h | 2009-05-27 | 2009-06-02 | 226, 220 |  |  | 2009-04-27 | 2009-05-04 | 40h | 16.94d | 0d |  | Naifeh | 32h |  |  | 3,680 | 274 | MDSS131 |  |  |
| 228 | 1.22.4.5.4 | Dev: BE - IPT individual - CRUD |  | 20h | 2009-05-01 | 2009-05-05 | 225 |  |  | 2009-05-04 | 2009-05-07 | 20h | 33.25d | 0d | start no earlier than 2009-04-19 | Justin [80%] | 16h |  | 1,840 | 1,840 | 275 | MDSS081 | 10 |  |
| 229 | 1.22.4.5.5 | Dev: GUI - IPT individual - CRUD |  | 20h | 2009-05-07 | 2009-05-11 | 226, 228 |  |  | 2009-05-25 | 2009-05-28 | 20h | 32.5d | 0d |  | Darrell [80%] | 16h |  | 1,840 | 1,840 | 276 | MDSS081 | 10 |  |
| 230 | 1.22.4.5.6 | Dev: IPT individual - query |  | 32h | 2009-06-02 | 2009-06-08 | 229, 227 |  |  | 2009-05-07 | 2009-05-14 | 40h | 16.94d |  |  | Naifeh | 32h |  |  | 3,680 | 277 | MDSS130 | 10 |  |
| 231 | 1.22.5 | Dev: BE - Stock Control |  | 16h | 2009-05-05 | 2009-05-07 | 228 |  |  | 2009-04-20 | 2009-04-23 | 28.23h | 33.25d | 0d | start no earlier than 2009-03-25 | Justin | 16h |  | 1,840 | 2,760 | 278 | MDSS032 |  |  |
| 232 | 1.22.6 | Dev: GUI - Stock Control |  | 16h | 2009-05-11 | 2009-05-13 | 231, 229 |  |  | 2009-05-11 | 2009-05-14 | 32h | 34.5d |  |  | Darrell | 16h |  | 1,840 | 3,680 | 279 | MDSS032 |  |  |
| 233 | 2 | Dev: Backup the data and configuration file |  | 40h | 2009-05-11 | 2009-05-15 | 193 |  |  | 2009-05-15 | 2009-05-21 | 40h | 32d |  |  | Eric | 40h |  |  | 4,600 | 280 | MDSS065 |  |  |
| 234 | 3 | Dev: Select the user language | milestone | 0h | 2009-02-02 A | 2009-02-02 A |  | 100% |  | 2009-02-02 | 2009-02-02 | 0h |  |  |  |  |  |  |  |  | 281 | MDSS118 |  |  |
| 235 | 4 | **Complete Test Cases** |  | 37.86d? | 2009-02-11 A | 2009-04-03 |  | 80% | 7.5d? | 2009-02-11 | 2009-04-01 | 35.25d? | 62.14d |  |  |  | 191.2h | 147.2h |  |  | 283 |  |  |  |
| 236 | 4.1 | **Entomology** |  | 3d? | 2009-03-11 A | 2009-03-13 A |  | 100% |  | 2009-03-17 | 2009-03-23 | 4d? |  |  |  |  | 12h | 12h |  |  | 284 |  |  |  |
| 237 | 4.1.1 | TC: Adult knock down assay |  | 1d? | 2009-03-11 A | 2009-03-11 A |  | 100% |  | 2009-03-18 | 2009-03-19 | 1d? |  |  | start no earlier than 2009-03-11 | Mike [50%] | 4h | 4h |  |  | 286 | MDSS006 |  |  |
| 238 | 4.1.2 | TC: Larvae discriminating dose assay |  | 1d? | 2009-03-12 A | 2009-03-12 A | 237 | 100% |  | 2009-03-19 | 2009-03-20 | 1d? |  |  |  | Mike [50%] | 4h | 4h |  |  | 287 | MDSS008 | 10 |  |
| 239 | 4.1.3 | TC: Efficacy assay |  | 1d? | 2009-03-13 A | 2009-03-13 A | 238 | 100% |  | 2009-03-20 | 2009-03-23 | 1d? |  |  |  | Mike [50%] | 4h | 4h |  |  | 288 | MDSS025 |  |  |
| 240 | 4.2 | **System** |  | 18d | 2009-02-11 A | 2009-03-06 A |  | 100% |  | 2009-02-11 | 2009-02-26 | 11.25d |  |  |  |  | 48h | 48h |  |  | 289 |  |  |  |
| 241 | 4.2.1 | TC: Configure system variables |  | 10h | 2009-02-12 A | 2009-02-13 A | 254 | 100% |  | 2009-02-12 | 2009-02-13 | 10h |  |  | start no earlier than 2009-02-11 | Sanika [40%] | 4h | 4h |  |  | 290 | MDSS109 |  | 1 day |
| 242 | 4.2.2 | TC: maintain catalogues |  | 10h | 2009-02-13 A | 2009-02-16 A | 241 | 100% |  | 2009-02-13 | 2009-02-16 | 10h |  |  |  | Sanika [40%] | 4h | 4h |  |  | 291 | MDSS103 |  |  |
| 243 | 4.2.3 | TC: Epi week - set or change |  | 10h | 2009-02-16 A | 2009-02-17 A | 242 | 100% |  | 2009-02-16 | 2009-02-17 | 10h |  |  |  | Sanika [40%] | 4h | 4h |  |  | 292 | MDSS119 |  | 2 days |
| 244 | 4.2.4 | TC: define season start and end dates |  | 10h | 2009-02-23 A | 2009-02-24 A | 243 | 100% |  | 2009-02-18 | 2009-02-19 | 10h |  |  | start no earlier than 2009-02-21 | Sanika [40%] | 4h | 4h |  |  | 293 | MDSS127 |  | 2 days |
| 245 | 4.2.5 | TC: enter/maintain people in the system |  | 10h | 2009-02-24 A | 2009-02-25 A | 244 | 100% |  | 2009-02-19 | 2009-02-20 | 10h |  |  | start no earlier than 2009-02-21 | Sanika [40%] | 4h | 4h |  |  | 294 | MDSS114 |  |  |
| 246 | 4.2.6 | TC: create synonyms for imported Geo entities |  | 10h | 2009-02-25 A | 2009-02-26 A | 245 | 100% |  | 2009-02-20 | 2009-02-23 | 10h |  |  |  | Sanika [40%] | 4h | 4h |  |  | 295 | MDSS112 |  |  |
| 247 | 4.2.7 | TC: User Admin Screen for account management |  | 10h | 2009-02-11 A | 2009-02-12 A |  | 100% |  | 2009-02-11 | 2009-02-12 | 10h |  |  | start no earlier than 2009-02-11 | Saul [40%] | 4h | 4h |  |  | 296 | MDSS142 |  | 3 days |
| 248 | 4.2.8 | TC: user Admin Screen for Role assignment |  | 10h | 2009-02-12 A | 2009-02-13 A | 247 | 100% |  | 2009-02-12 | 2009-02-13 | 10h |  |  | start no earlier than 2009-02-01 | Saul [40%] | 4h | 4h |  |  | 297 | MDSS144 |  | 2 days |
| 249 | 4.2.9 | TC: Change date/time format |  | 10h | 2009-03-02 A | 2009-03-03 A | 248 | 100% |  | 2009-02-19 | 2009-02-20 | 10h |  |  | start no earlier than 2009-03-02 | Saul [40%] | 4h | 4h |  |  | 301 | MDSS120 |  |  |
| 250 | 4.2.10 | TC: Change geo root |  | 10h | 2009-03-03 A | 2009-03-04 A | 249 | 100% |  | 2009-02-20 | 2009-02-23 | 10h |  |  |  | Saul [40%] | 4h | 4h |  |  | 302 | MDSS122 |  |  |
| 251 | 4.2.11 | TC: Select the user language |  | 10h | 2009-03-04 A | 2009-03-05 A | 250 | 100% |  | 2009-02-23 | 2009-02-24 | 10h |  |  |  | Saul [40%] | 4h | 4h |  |  | 303 | MDSS118 |  |  |
| 252 | 4.2.12 | TC: Change date/time format |  | 10h | 2009-03-05 A | 2009-03-06 A | 251 | 100% |  | 2009-02-25 | 2009-02-26 | 10h |  |  |  | Saul [40%] | 4h | 4h |  |  | 304 | MDSS120 |  |  |

| ID | WBS | Task | Duration | Start | Finish | Predecessors | Complete | Remaining | Baseline start | Baseline finish | Baseline duration | Total slack | Free slack | Constraint | Resources | Work | Actual work | Text4 | Text1 | Text2 | Text3 |
| --- | --- | --- | --- | --- | --- | --- | --- | --- | --- | --- | --- | --- | --- | --- | --- | --- | --- | --- | --- | --- | --- |
| 253 | 4.3 | **Indicator Survey** | 1.25d | 2009-02-11 A | 2009-02-12 A |  | 100% |  | 2009-02-11 | 2009-02-12 | 1.25d |  |  |  |  | 4h | 4h | 305 |  |  |  |
| 254 | 4.3.1 | TC: Indicator survey - CRUD | 10h | 2009-02-11 A | 2009-02-12 A |  | 100% |  | 2009-02-11 | 2009-02-12 | 10h |  |  | start no earlier than 2009-02-11 | Sanika [40%] | 4h | 4h | 306 | MDSS026 |  |  |
| 255 | 4.4 | **Case Surveilance** | 135.14h | 2009-03-11 A | 2009-04-03 |  | 92% | 11.08h | 2009-03-12 | 2009-03-25 | 68.58h | 47.86d |  |  |  | 36h | 32h | 308 |  |  |  |
| 256 | 4.4.1 | TC: aggregated cases - CRUD | 8h | 2009-03-11 A | 2009-03-12 A | 284 | 100% |  | 2009-03-12 | 2009-03-13 | 5.71h |  |  | start no earlier than 2009-03-10 | Dave [50%] | 4h | 4h | 309 | MDSS002 | 5 days |  |
| 257 | 4.4.2 | TC: calculate CFR | 8h | 2009-03-12 A | 2009-03-13 A | 256 | 100% |  | 2009-03-13 | 2009-03-16 | 5.71h |  |  |  | Dave [50%] | 4h | 4h | 310 | MDSS087 | 4 days |  |
| 258 | 4.4.3 | TC: aggregated cases - dynamic query | 8h | 2009-03-13 A | 2009-03-16 A | 257 | 100% |  | 2009-03-16 | 2009-03-16 | 5.71h |  |  |  | Dave [50%] | 4h | 4h | 311 | MDSS129 | 5 days |  |
| 259 | 4.4.4 | TC: Input or modify population data | 8h | 2009-03-16 A | 2009-03-17 A | 258 | 100% |  | 2009-03-16 | 2009-03-17 | 5.71h |  |  | start no earlier than 2009-02-01 | Dave [50%] | 4h | 4h | 312 | MDSS003 | 4 days |  |
| 260 | 4.4.5 | TC: Import population or annual growth rate data | 8h | 2009-03-17 A | 2009-03-18 A | 259 | 100% |  | 2009-03-17 | 2009-03-18 | 5.71h |  |  |  | Dave [50%] | 4h | 4h | 313 | MDSS083 |  |  |
| 261 | 4.4.6 | TC: input/modify outbreak thresholds | 8h | 2009-03-18 A | 2009-03-19 A | 260 | 100% |  | 2009-03-18 | 2009-03-18 | 5.71h |  |  |  | Dave [50%] | 4h | 4h | 314 | MDSS105 | 5 days |  |
| 262 | 4.4.7 | TC :import outbreak thresholds | 8h | 2009-03-19 A | 2009-03-20 A | 261 | 100% |  | 2009-03-18 | 2009-03-19 | 5.71h |  |  |  | Dave [50%] | 4h | 4h | 315 | MDSS085 | 5 days |  |
| 263 | 4.4.8 | TC: Calculate annual or seasonal population | 8h | 2009-03-20 A | 2009-03-23 A | 262 | 100% |  | 2009-03-19 | 2009-03-20 | 5.71h |  |  |  | Dave [50%] | 4h | 4h | 316 | MDSS073 | 5 days |  |
| 264 | 4.4.9 | TC: individual case - query | 5.71h | 2009-04-02 | 2009-04-03 | 160 |  |  | 2009-03-24 | 2009-03-25 | 5.71h | 47.86d | 0d |  | Marlize [70%] | 4h |  | 320 | MDSS128 | 5 days |  |
| 265 | 4.5 | **Intervention monitoring** | 302.86h | 2009-02-11 A | 2009-04-03 |  | 65% | 107.24h | 2009-02-11 | 2009-04-01 | 282.04h | 62.14d |  |  |  | 91.2h | 51.2h | 321 |  |  |  |
| 266 | 4.5.1 | **IRS** | 98h | 2009-03-16 A | 2009-04-01 |  | 33% | 66h | 2009-03-25 | 2009-03-31 | 34.29h | 64.75d |  |  |  | 44h | 16h | 322 |  |  |  |
| 267 | 4.5.1.1 | TC: enter/maintain spray team member | 8h | 2009-03-16 A | 2009-03-16 A |  | 100% |  | 2009-03-25 | 2009-03-25 | 5.71h |  |  | start no earlier than 2009-03-16 | Saul [50%] | 4h | 4h | 323 | MDSS113 |  |  |
| 268 | 4.5.1.2 | TC: enter/maintain IRS teams | 8h | 2009-03-17 A | 2009-03-17 A | 267 | 100% |  | 2009-03-25 | 2009-03-26 | 5.71h |  |  |  | Saul [50%] | 4h | 4h | 324 | MDSS141 |  |  |
| 269 | 4.5.1.3 | TC:Indicator survey query | 8h | 2009-03-25 | 2009-03-25 | 263, 268 |  |  |  |  |  | 64.75d | 0d | start no earlier than 2009-03-25 | Dave [50%] | 4h |  | 307 | MDSS140 |  |  |
| 270 | 4.5.1.4 | TC: ITN aggregated data - query | 8h | 2009-03-26 | 2009-03-26 | 269, 156 |  |  | 2009-02-25 | 2009-02-26 | 10h | 64.75d | 0d |  | Dave [50%] | 4h |  | 333 | MDSS136 |  |  |
| 271 | 4.5.1.5 | TC: ITN by facility - query | 8h | 2009-03-27 | 2009-03-27 | 270, 158 |  |  | 2009-03-02 | 2009-03-03 | 10h | 64.75d | 0d |  | Dave [50%] | 4h |  | 336 | MDSS135 |  |  |
| 272 | 4.5.1.6 | TC: ITN by community - query | 8h | 2009-03-30 | 2009-03-30 | 271 |  |  |  |  |  | 64.75d | 0d |  | Dave [50%] | 4h |  |  | MDSS137 |  |  |
| 273 | 4.5.1.7 | TC: ITN by household - query | 10h | 2009-03-31 | 2009-04-01 | 272, 271 |  |  | 2009-03-05 | 2009-03-06 | 10h | 64.75d |  | start no earlier than 2009-02-09 | Sanika [40%] | 4h |  | 338 | MDSS138 |  | 10 |
| 274 | 4.5.1.8 | TC: individual cases - CRUD | 16h | 2009-03-24 | 2009-03-25 |  |  |  | 2009-03-23 | 2009-03-23 | 5.71h | 69d |  | finish no earlier than 2009-03-25 | Sanika [25%] | 4h |  | 318 | MDSS001 | 5 days |  |
| 275 | 4.5.1.9 | TC: input or modify IRS targets | 8h | 2009-03-17 A | 2009-03-17 A |  | 100% |  | 2009-03-26 | 2009-03-27 | 5.71h |  |  | start no earlier than 2009-03-17 | Saul [50%] | 4h | 4h | 325 | MDSS028 |  |  |
| 276 | 4.5.1.10 | TC: Configure items relating to application rate | 8h | 2009-03-18 A | 2009-03-18 A | 275 | 100% |  | 2009-03-27 | 2009-03-30 | 5.71h |  |  |  | Saul [50%] | 4h | 4h | 326 | MDSS106 |  |  |
| 277 | 4.5.1.11 | TC: IRS - CRUD | 8h | 2009-03-25 | 2009-03-25 | 276 |  |  | 2009-03-30 | 2009-03-30 | 5.71h | 67d | 0d | start no earlier than 2009-03-25 | Saul [50%] | 4h |  | 327 | MDSS027 |  |  |

| ID | WBS | Task | Type | Duration | Start | Finish | Predecessors | Complete | Remaining | Baseline start | Baseline finish | Baseline duration | Total slack | Free slack | Constraint | Resources | Work | Actual work | Cost | Baseline cost | Text4 | Text1 | Text2 | Text3 |
| --- | --- | --- | --- | --- | --- | --- | --- | --- | --- | --- | --- | --- | --- | --- | --- | --- | --- | --- | --- | --- | --- | --- | --- | --- |
| 278 | 4.5.2 | **Larvaciding** |  | 20h | 2009-02-11 A | 2009-02-13 A |  | 100% |  | 2009-02-11 | 2009-02-13 | 20h |  |  |  |  | 4h | 4h |  |  | 329 |  |  |  |
| 279 | 4.5.2.1 | TC: larviciding - CRUD |  | 20h | 2009-02-11 A | 2009-02-13 A |  | 100% |  | 2009-02-11 | 2009-02-13 | 20h |  |  | start no earlier than 2009-02-11 | Lars [20%] | 4h | 4h |  |  | 330 | MDSS031 | 8 days |  |
| 280 | 4.5.3 | **ITN** |  | 170h | 2009-02-26 A | 2009-03-27 |  | 75% | 42.5h | 2009-02-23 | 2009-03-06 | 70h | 67d |  |  |  | 27.2h | 19.2h |  |  | 331 |  |  |  |
| 281 | 4.5.3.1 | TC: ITN aggregated data - CRUD |  | 10h | 2009-02-26 A | 2009-02-27 A | 246 | 100% |  | 2009-02-23 | 2009-02-24 | 10h |  |  |  | Sanika [40%] | 4h | 4h |  |  | 332 | MDSS080 | 5 days |  |
| 282 | 4.5.3.2 | TC: ITN facility distribution - CRUD |  | 10h | 2009-03-02 A | 2009-03-03 A | 281 | 100% |  | 2009-02-26 | 2009-02-27 | 10h |  |  |  | Sanika [40%] | 4h | 4h |  |  | 334 | MDSS030 | 5 days |  |
| 283 | 4.5.3.3 | TC: ITN community distribution - CRUD |  | 10h | 2009-03-03 A | 2009-03-04 A | 282 | 100% |  | 2009-02-27 | 2009-03-02 | 10h |  |  |  | Sanika [40%] | 4h | 4h |  |  | 335 | MDSS079 | 5 days |  |
| 284 | 4.5.3.4 | TC: ITN by household - CRUD |  | 10h | 2009-03-10 A | 2009-03-11 A | 283 | 100% |  | 2009-03-04 | 2009-03-05 | 10h |  |  | start no earlier than 2009-03-10 | Dave [40%] | 4h | 4h |  |  | 337 | MDSS082 | 5 days | 10 |
| 285 | 4.5.3.5 | TC: Change visibility of a GUI field |  | 8h | 2009-03-05 A | 2009-03-06 A |  | 100% |  |  |  |  |  |  |  | Sanika [40%] | 3.2h | 3.2h |  |  | 366 | MDSS117 |  |  |
| 286 | 4.5.3.6 | TC: calculate incidence |  | 8h | 2009-03-26 | 2009-03-26 | 277 |  |  | 2009-03-20 | 2009-03-23 | 5.71h | 67d | 0d |  | Saul [50%] | 4h |  |  |  | 317 | MDSS086 | 5 days |  |
| 287 | 4.5.3.7 | TC: Outbreak notification |  | 8h | 2009-03-27 | 2009-03-27 | 286 |  |  | 2009-03-23 | 2009-03-24 | 5.71h | 67d |  |  | Saul [50%] | 4h |  |  |  | 319 | MDSS124 | 5 days |  |
| 288 | 4.5.4 | **Intervention Planning** |  | 5.71h | 2009-04-03 | 2009-04-03 |  |  |  | 2009-03-31 | 2009-04-01 | 5.71h | 47.86d |  |  |  | 4h |  |  |  | 339 |  |  |  |
| 289 | 4.5.4.1 | TC: Intervention planning |  | 5.71h | 2009-04-03 | 2009-04-03 | 264 |  |  | 2009-03-31 | 2009-04-01 | 5.71h | 47.86d | 0d |  | Marlize [70%] | 4h |  |  |  | 340 | MDSS077 |  |  |
| 290 | 4.5.5 | **IPT** |  | 40h | 2009-02-13 A | 2009-02-20 A |  | 100% |  | 2009-02-13 | 2009-02-20 | 40h |  |  |  |  | 8h | 8h |  |  | 341 |  |  |  |
| 291 | 4.5.5.1 | TC: IPT aggregated - CRUD |  | 20h | 2009-02-13 A | 2009-02-17 A | 279 | 100% |  | 2009-02-13 | 2009-02-17 | 20h |  |  |  | Lars [20%] | 4h | 4h |  |  | 342 | MDSS069 |  |  |
| 292 | 4.5.5.2 | TC: IPT individual - CRUD |  | 20h | 2009-02-18 A | 2009-02-20 A | 291 | 100% |  | 2009-02-18 | 2009-02-20 | 20h |  |  |  | Lars [20%] | 4h | 4h |  |  | 343 | MDSS081 |  | 10 |
| 293 | 4.5.6 | **Stock Control** |  | 20h | 2009-02-20 A | 2009-02-24 A |  | 100% |  | 2009-02-20 | 2009-02-24 | 20h |  |  |  |  | 4h | 4h |  |  | 344 |  |  |  |
| 294 | 4.5.6.1 | TC: Stock Control |  | 20h | 2009-02-20 A | 2009-02-24 A | 292 | 100% |  | 2009-02-20 | 2009-02-24 | 20h |  |  |  | Lars [20%] | 4h | 4h |  |  | 345 | MDSS032 |  |  |
| 295 | 5 | Create standard queries and reports |  | 114.28h | 2009-04-03 | 2009-04-24 | 289 |  |  | 2009-04-08 | 2009-04-29 | 114.28h | 47.86d |  |  | Marlize [70%] | 80h |  |  |  | 346 |  |  |  |
| 296 | 6 | Receive historical entomological data | milestone | 8h | 2009-03-27 | 2009-03-27 |  |  |  | 2009-05-04 | 2009-05-04 | 8h | 66d | 0d | start no earlier than 2009-03-27 | MRC | 8h |  |  |  | 347 |  |  |  |
| 297 | 7 | Import historical entomological data |  | 8h | 2009-03-30 | 2009-03-30 | 296 |  |  | 2009-05-05 | 2009-05-05 | 8h | 66d |  |  |  |  |  |  |  | 348 |  |  |  |
| 298 | 8 | Receive all historical IRS data | milestone | 8h | 2009-05-04 | 2009-05-04 |  |  |  | 2009-05-04 | 2009-05-04 | 8h | 40d | 0d | start no earlier than 2009-05-04 |  |  |  |  |  | 349 |  |  |  |
| 299 | 9 | Import all historical IRS data |  | 8h | 2009-05-05 | 2009-05-05 | 298 |  |  | 2009-05-05 | 2009-05-05 | 8h | 40d |  |  |  |  |  |  |  | 350 |  |  |  |
| 300 | 10 | Order MDSS Hardware | milestone | 0h | 2009-04-01 | 2009-04-01 |  |  |  | 2009-02-02 | 2009-02-02 | 0h | 65d |  | start no earlier than 2009-04-01 | Mike |  |  |  |  | 351 |  |  |  |
| 301 | 11 | Appoint MDSS Administrators | milestone | 0h | 2009-06-01 | 2009-06-01 |  |  |  | 2009-02-02 | 2009-02-02 | 0h | 22d |  | start no earlier than 2009-06-01 | Mike |  |  |  |  | 352 |  |  |  |
| 302 | 12 | Complete system translation into Portuguese |  | 20d | 2009-04-06 | 2009-05-01 |  |  |  | 2009-04-06 | 2009-05-01 | 20d | 42d |  | start no earlier than 2009-04-06 | Mike [5%] | 8h |  |  |  | 353 |  |  |  |
| 303 | 13 | Dev: Installation (minimal or full) |  | 40h | 2009-05-07 | 2009-05-14 | 231 |  |  | 2009-05-15 | 2009-05-22 | 40h | 33.25d |  |  | Justin | 40h |  | 4,600 | 4,600 | 354 | SYS12 |  |  |
| 304 | 14 | Complete Test and Fix Cycle |  | 20d | 2009-05-18 | 2009-06-12 |  |  |  | 2009-05-18 | 2009-06-12 | 20d | 10d | 0d | start no earlier than 2009-05-18 |  |  |  |  |  | 355 |  |  |  |
| 305 | 15 | Implementation planning |  | 16h | 2009-06-15 | 2009-06-16 | 304 |  |  | 2009-06-15 | 2009-06-16 | 16h | 10d |  |  |  | 16h |  |  |  | 356 |  |  |  |
| 306 | 16 | Project Buffer |  | 10d | 2009-06-16 | 2009-06-29 |  |  |  | 2009-06-16 | 2009-06-29 | 10d | 0d |  | start no earlier than 2009-06-16 |  | 80h |  |  |  | 357 |  |  |  |
| 307 | 17 | Ready for Pilot Roll-Out | milestone | 8h | 2009-06-30 | 2009-06-30 | 306 |  |  | 2009-06-30 | 2009-06-30 | 8h | 0d |  |  |  |  |  |  |  | 358 |  |  |  |
